# PlanificacionTareas

How a schedule from MS Project changed from version to version. A marks actual dates.

## Version 1 (saved 2024-07-02, file TareasGrupo8.mpp)

Note of the change: Subida del trabajo entero

| ID | WBS | Task | Duration | Start | Finish | Predecessors | Total float |
| --- | --- | --- | --- | --- | --- | --- | --- |
| 1 | 1 | **Desarrollo e implementación del Sistema de Información** | 29.25d | 2024-04-30 | 2024-06-10 |  | 0d |
| 2 | 1.1 | **Investigación preliminar** | 1.75d | 2024-04-30 | 2024-05-01 |  | 0d |
| 3 |  | Preparar preguntas de la entrevista | 0.25d | 2024-04-30 | 2024-04-30 |  | 0d |
| 4 |  | Entrevistar a la dueña del kiosko | 0.25d | 2024-04-30 | 2024-04-30 | 3 | 0d |
| 5 |  | Evaluar y actualzar el hardware existente | 0.75d | 2024-04-30 | 2024-05-01 | 4 | 0d |
| 6 |  | Redactar informe | 0.5d | 2024-05-01 | 2024-05-01 | 5 | 0d |
| 7 |  | Informe aprobado | 0d | 2024-05-01 | 2024-05-01 | 6 | 0d |
| 8 | 1.2 | **Análisis del sistema** | 4d | 2024-05-01 | 2024-05-07 |  | 0d |
| 9 | 1.2.1 | **Realización de la ERS** | 1d | 2024-05-01 | 2024-05-02 |  | 0d |
| 10 |  | Realizar requisitos funcionales | 0.75d | 2024-05-01 | 2024-05-02 | 7 | 0d |
| 11 |  | Realizar requisitos no funcionales | 0.25d | 2024-05-02 | 2024-05-02 | 10 | 0d |
| 12 |  | ERS completada | 0d | 2024-05-02 | 2024-05-02 | 11 | 0d |
| 13 |  | Realizar el modelo de clases | 1d | 2024-05-02 | 2024-05-03 | 12 | 0d |
| 14 |  | Realizar el modelo de casos de uso | 2d | 2024-05-03 | 2024-05-07 | 13 | 0d |
| 15 |  | Análisis completado | 0d | 2024-05-07 | 2024-05-07 | 14 | 0d |
| 16 | 1.3 | **Realización del módulo de inventario** | 2.75d | 2024-05-03 | 2024-05-08 |  | 2d |
| 17 |  | Realizar base de datos del stock | 2.75d | 2024-05-03 | 2024-05-08 | 13 | 7.5d |
| 18 |  | Realizar interfaz de carga de nuevo producto | 0.5d | 2024-05-07 | 2024-05-08 | 15 | 7.5d |
| 19 |  | Realizar interfaz de ingreso y egreso de productos | 0.5d | 2024-05-07 | 2024-05-08 | 15 | 7.5d |
| 20 |  | Realizar la lógica del resumen de faltantes | 0.25d | 2024-05-07 | 2024-05-07 | 15 | 0d |
| 21 |  | Integrar el modulo de inventario | 0.25d | 2024-05-08 | 2024-05-08 | 18, 19 | 7.5d |
| 22 |  | Módulo del inventario completado | 0d | 2024-05-08 | 2024-05-08 | 21, 17, 20 | 7.5d |
| 23 | 1.4 | **Realización del módulo de ventas** | 1.25d | 2024-05-08 | 2024-05-09 |  | 7.5d |
| 24 |  | Realizar interfaz de consulta de precios | 1d | 2024-05-08 | 2024-05-09 | 22 | 7.5d |
| 25 |  | Realizar interfaz de registro de ventas | 1d | 2024-05-08 | 2024-05-09 | 17FF, 19 | 7.75d |
| 26 |  | Realizar lógica del cálculo de estadísticas | 0.5d | 2024-05-08 | 2024-05-08 | 17 | 8d |
| 27 |  | Módulo de ventas completado | 0d | 2024-05-09 | 2024-05-09 | 26, 24, 25 | 7.5d |
| 28 | 1.5 | **Realización módulo de Mercado Libre** | 3.5d | 2024-05-08 | 2024-05-13 |  | 0d |
| 29 |  | Diseñar la arquitectura de la integración y de entrada y salida de datos | 2d | 2024-05-08 | 2024-05-09 | 20 | 0d |
| 30 |  | Realizar desarrollo de interfaz de usuario de gestión de pedidos | 1d | 2024-05-10 | 2024-05-10 | 29 | 0d |
| 31 |  | Realizar implementación de sincronización de datos | 0.5d | 2024-05-10 | 2024-05-10 | 30FF | 0d |
| 32 |  | Realizar pruebas de integración con Mercado Libre | 0.5d | 2024-05-13 | 2024-05-13 | 31 | 5.5d |
| 33 |  | Despliegue del módulo de Mercado Libre completado | 0d | 2024-05-13 | 2024-05-13 | 32 | 5.5d |
| 34 | 1.6 | **Realización del módulo de publicidad** | 15d | 2024-04-30 | 2024-05-20 |  | 0d |
| 35 |  | Desarrollar la lógica de promociones internas | 2d | 2024-05-13 | 2024-05-14 | 31 | 0d |
| 36 |  | Desarrollar la lógica de procesamiento y extracción de las promociones recibidas | 2d | 2024-05-10 | 2024-05-13 | 29 | 1d |
| 37 |  | Realizar la interfaz del ingreso de promociones en la base de datos | 1d | 2024-05-09 | 2024-05-10 | 18, 25 | 21d |
| 38 |  | Diseñar plantillas e imágenes de diferentes tipos de materiales publicitarios | 3d | 2024-04-30 | 2024-05-02 |  | 10.5d |
| 39 |  | Desarrollar algoritmo de generacion de contenido publicitario | 2.5d | 2024-05-15 | 2024-05-17 | 36, 35 | 0d |
| 40 |  | Integrar el algoritmo con las plantillas de diseño de los materiales publicitarios finales. | 1d | 2024-05-17 | 2024-05-20 | 38, 39 | 0d |
| 41 |  | Desarrollar la lógica de distribución de la publicidad en los medios seleccionados | 1d | 2024-05-17 | 2024-05-20 | 39 | 0d |
| 42 |  | Integrar el módulo de publicidad en el sistema de información del kiosco | 0.5d | 2024-05-20 | 2024-05-20 | 40, 41 | 0d |
| 43 |  | Módulo de publicidad integrado y funcional en el sistema de información del kiosco | 0d | 2024-05-20 | 2024-05-20 | 42, 37 | 0d |
| 44 |  | Desarrollo del Sistema de Información terminado | 0d | 2024-05-20 | 2024-05-20 | 43, 33, 27 | 0d |
| 45 | 1.8 | **Prueba del sistema** | 9d | 2024-05-21 | 2024-05-31 |  | 0d |
| 46 |  | Definir los tipos de pruebas a realizar y los criterios de aceptación | 1d | 2024-05-21 | 2024-05-21 | 44 | 0d |
| 47 |  | Redactar casos de prueba detallados de cada módulo y funcionalidad del sistema | 3d | 2024-05-22 | 2024-05-24 | 46 | 0d |
| 48 |  | Ejecutar los casos de prueba utilizando herramientas de prueba adecuadas | 1d | 2024-05-27 | 2024-05-27 | 47 | 0d |
| 49 |  | Controlar y corregir los errores | 2d | 2024-05-28 | 2024-05-29 | 48 | 0d |
| 50 |  | Documentar los resultados de las pruebas | 2d | 2024-05-30 | 2024-05-31 | 49 | 0d |
| 51 |  | Pruebas del sistema completadas y errores corregidos | 0d | 2024-05-31 | 2024-05-31 | 50 | 0d |
| 52 | 1.9 | **Realización de la capacitación** | 5.25d | 2024-06-03 | 2024-06-10 |  | 0d |
| 53 |  | Definir los objetivos de la capacitación | 0.25d | 2024-06-03 | 2024-06-03 | 51 | 0d |
| 54 |  | Seleccionar y elaborar el material de capacitación | 1d | 2024-06-03 | 2024-06-04 | 53 | 0d |
| 55 |  | Definir el cronograma de la capacitación | 0.5d | 2024-06-04 | 2024-06-04 | 54 | 0d |
| 56 |  | Capacitar en el uso de cada módulo del sistema (inventario, ventas, publicidad) | 2d | 2024-06-04 | 2024-06-06 | 55 | 0d |
| 57 |  | Practicar el uso del sistema en situaciones reales | 1.5d | 2024-06-06 | 2024-06-10 | 56 | 0d |
| 58 |  | Capacitación del personal en el uso del sistema de información completada | 0d | 2024-06-10 | 2024-06-10 | 57 | 0d |
| 59 | 1.10 | **Implementación del sistema** | 1.25d | 2024-06-03 | 2024-06-04 |  | 4d |
| 60 |  | Coordinar horario con la dueña del kiosko | 0.25d | 2024-06-03 | 2024-06-03 | 51 | 4d |
| 61 |  | Realizar la instalación del software | 0.5d | 2024-06-03 | 2024-06-03 | 60 | 4d |
| 62 |  | Controlar parametros | 0.5d | 2024-06-03 | 2024-06-04 | 61 | 4d |
| 63 |  | Implementación satisfactoria del sistema | 0d | 2024-06-04 | 2024-06-04 | 62 | 4d |
| 64 |  | Proyecto finalizado | 0d | 2024-06-10 | 2024-06-10 | 58, 63 | 0d |

## Version 2 (saved 2024-07-13, file TareasConLineaBaseGrupo8.mpp)

Note of the change: Subida del trabajo entero

Last finish stays 2024-06-10. Complete tasks 0 → 53.

Changed:

| ID | Task | Start | Finish | Duration | Complete | Total float | Other |
| --- | --- | --- | --- | --- | --- | --- | --- |
| 1 | **Desarrollo e implementación del Sistema de Información** | 2024-04-30 A | 2024-06-10 A | 29.25d → 30d | 0% → 100% | 0d → none | baseline start none → 2024-04-30; baseline finish none → 2024-06-10 |
| 2 | **Investigación preliminar** | 2024-04-30 A | 2024-05-01 A |  | 0% → 100% | 0d → none | baseline start none → 2024-04-30; baseline finish none → 2024-05-01 |
| 3 | Preparar preguntas de la entrevista | 2024-04-30 A | 2024-04-30 A |  | 0% → 100% | 0d → none | baseline start none → 2024-04-30; baseline finish none → 2024-04-30 |
| 4 | Entrevistar a la dueña del kiosko | 2024-04-30 A | 2024-04-30 A |  | 0% → 100% | 0d → none | baseline start none → 2024-04-30; baseline finish none → 2024-04-30 |
| 5 | Evaluar y actualzar el hardware existente | 2024-04-30 A | 2024-05-01 A |  | 0% → 100% | 0d → none | baseline start none → 2024-04-30; baseline finish none → 2024-05-01 |
| 6 | Redactar informe | 2024-05-01 A | 2024-05-01 A |  | 0% → 100% | 0d → none | baseline start none → 2024-05-01; baseline finish none → 2024-05-01 |
| 7 | Informe aprobado | 2024-05-01 A | 2024-05-01 A |  | 0% → 100% | 0d → none | baseline start none → 2024-05-01; baseline finish none → 2024-05-01 |
| 8 | **Análisis del sistema** | 2024-05-01 A | 2024-05-07 A |  | 0% → 100% | 0d → none | baseline start none → 2024-05-01; baseline finish none → 2024-05-07 |
| 9 | **Realización de la ERS** | 2024-05-01 A | 2024-05-02 A |  | 0% → 100% | 0d → none | baseline start none → 2024-05-01; baseline finish none → 2024-05-02 |
| 10 | Realizar requisitos funcionales | 2024-05-01 A | 2024-05-02 A |  | 0% → 100% | 0d → none | baseline start none → 2024-05-01; baseline finish none → 2024-05-02 |
| 11 | Realizar requisitos no funcionales | 2024-05-02 A | 2024-05-02 A |  | 0% → 100% | 0d → none | baseline start none → 2024-05-02; baseline finish none → 2024-05-02 |
| 12 | ERS completada | 2024-05-02 A | 2024-05-02 A |  | 0% → 100% | 0d → none | baseline start none → 2024-05-02; baseline finish none → 2024-05-02 |
| 13 | Realizar el modelo de clases | 2024-05-02 A | 2024-05-03 A |  | 0% → 100% | 0d → none | baseline start none → 2024-05-02; baseline finish none → 2024-05-03 |
| 14 | Realizar el modelo de casos de uso | 2024-05-03 A | 2024-05-07 A |  | 0% → 100% | 0d → none | baseline start none → 2024-05-03; baseline finish none → 2024-05-07 |
| 15 | Análisis completado | 2024-05-07 A | 2024-05-07 A |  | 0% → 100% | 0d → none | baseline start none → 2024-05-07; baseline finish none → 2024-05-07 |
| 16 | **Realización del módulo de inventario** | 2024-05-03 A | 2024-05-08 → 2024-05-09 A (+1d) | 2.75d → 3.75d | 0% → 100% | 2d → none | baseline start none → 2024-05-03; baseline finish none → 2024-05-08 |
| 17 | Realizar base de datos del stock | 2024-05-03 A | 2024-05-08 A |  | 0% → 100% | 7.5d → none | baseline start none → 2024-05-03; baseline finish none → 2024-05-08 |
| 18 | Realizar interfaz de carga de nuevo producto | 2024-05-07 A | 2024-05-08 A |  | 0% → 100% | 7.5d → none | baseline start none → 2024-05-07; baseline finish none → 2024-05-08 |
| 19 | Realizar interfaz de ingreso y egreso de productos | 2024-05-07 A | 2024-05-08 A |  | 0% → 100% | 7.5d → none | baseline start none → 2024-05-07; baseline finish none → 2024-05-08 |
| 20 | Realizar la lógica del resumen de faltantes | 2024-05-07 A | 2024-05-07 A |  | 0% → 100% | 0d → none | resources Programador backend 2 → none; baseline start none → 2024-05-07; baseline finish none → 2024-05-07 |
| 21 | Integrar el modulo de inventario | 2024-05-08 A | 2024-05-08 → 2024-05-09 A (+1d) | 0.25d → 1.25d | 0% → 100% | 7.5d → none | baseline start none → 2024-05-08; baseline finish none → 2024-05-08 |
| 22 | Módulo del inventario completado | 2024-05-08 → 2024-05-09 A (+1d) | 2024-05-08 → 2024-05-09 A (+1d) |  | 0% → 100% | 7.5d → none | baseline start none → 2024-05-08; baseline finish none → 2024-05-08 |
| 23 | **Realización del módulo de ventas** | 2024-05-08 A | 2024-05-09 → 2024-05-10 A (+1d) | 1.25d → 2.25d | 0% → 100% | 7.5d → none | baseline start none → 2024-05-08; baseline finish none → 2024-05-09 |
| 24 | Realizar interfaz de consulta de precios | 2024-05-08 → 2024-05-09 A (+1d) | 2024-05-09 → 2024-05-10 A (+1d) |  | 0% → 100% | 7.5d → none | baseline start none → 2024-05-08; baseline finish none → 2024-05-09 |
| 25 | Realizar interfaz de registro de ventas | 2024-05-08 A | 2024-05-09 A |  | 0% → 100% | 7.75d → none | baseline start none → 2024-05-08; baseline finish none → 2024-05-09 |
| 26 | Realizar lógica del cálculo de estadísticas | 2024-05-08 A | 2024-05-08 A |  | 0% → 100% | 8d → none | baseline start none → 2024-05-08; baseline finish none → 2024-05-08 |
| 27 | Módulo de ventas completado | 2024-05-09 → 2024-05-10 A (+1d) | 2024-05-09 → 2024-05-10 A (+1d) |  | 0% → 100% | 7.5d → none | baseline start none → 2024-05-09; baseline finish none → 2024-05-09 |
| 28 | **Realización módulo de Mercado Libre** | 2024-05-08 A | 2024-05-13 A |  | 0% → 100% | 0d → none | baseline start none → 2024-05-08; baseline finish none → 2024-05-13 |
| 29 | Diseñar la arquitectura de la integración y de entrada y salida de datos | 2024-05-08 A | 2024-05-09 A |  | 0% → 100% | 0d → none | resources Programador backend 2 → none; baseline start none → 2024-05-08; baseline finish none → 2024-05-09 |
| 30 | Realizar desarrollo de interfaz de usuario de gestión de pedidos | 2024-05-10 A | 2024-05-10 A |  | 0% → 100% | 0d → none | baseline start none → 2024-05-10; baseline finish none → 2024-05-10 |
| 31 | Realizar implementación de sincronización de datos | 2024-05-10 A | 2024-05-10 A |  | 0% → 100% | 0d → none | resources Programador backend 2 → none; baseline start none → 2024-05-10; baseline finish none → 2024-05-10 |
| 32 | Realizar pruebas de integración con Mercado Libre | 2024-05-13 A | 2024-05-13 A |  | 0% → 100% | 5.5d → none | baseline start none → 2024-05-13; baseline finish none → 2024-05-13 |
| 33 | Despliegue del módulo de Mercado Libre completado | 2024-05-13 A | 2024-05-13 A |  | 0% → 100% | 5.5d → none | baseline start none → 2024-05-13; baseline finish none → 2024-05-13 |
| 34 | **Realización del módulo de publicidad** | 2024-04-30 A | 2024-05-20 A |  | 0% → 100% | 0d → none | baseline start none → 2024-04-30; baseline finish none → 2024-05-20 |
| 35 | Desarrollar la lógica de promociones internas | 2024-05-13 A | 2024-05-14 A |  | 0% → 100% | 0d → none | resources Programador backend 2 → none; baseline start none → 2024-05-13; baseline finish none → 2024-05-14 |
| 36 | Desarrollar la lógica de procesamiento y extracción de las promociones recibidas | 2024-05-10 A | 2024-05-13 A |  | 0% → 100% | 1d → none | baseline start none → 2024-05-10; baseline finish none → 2024-05-13 |
| 37 | Realizar la interfaz del ingreso de promociones en la base de datos | 2024-05-09 A | 2024-05-10 A |  | 0% → 100% | 21d → none | baseline start none → 2024-05-09; baseline finish none → 2024-05-10 |
| 38 | Diseñar plantillas e imágenes de diferentes tipos de materiales publicitarios | 2024-04-30 A | 2024-05-02 A |  | 0% → 100% | 10.5d → none | baseline start none → 2024-04-30; baseline finish none → 2024-05-02 |
| 39 | Desarrollar algoritmo de generacion de contenido publicitario | 2024-05-15 A | 2024-05-17 A |  | 0% → 100% | 0d → none | baseline start none → 2024-05-15; baseline finish none → 2024-05-17 |
| 40 | Integrar el algoritmo con las plantillas de diseño de los materiales publicitarios finales. | 2024-05-17 A | 2024-05-20 A |  | 0% → 100% | 0d → none | baseline start none → 2024-05-17; baseline finish none → 2024-05-20 |
| 41 | Desarrollar la lógica de distribución de la publicidad en los medios seleccionados | 2024-05-17 A | 2024-05-20 A |  | 0% → 100% | 0d → none | resources Programador backend 2 → none; baseline start none → 2024-05-17; baseline finish none → 2024-05-20 |
| 42 | Integrar el módulo de publicidad en el sistema de información del kiosco | 2024-05-20 A | 2024-05-20 A |  | 0% → 100% | 0d → none | baseline start none → 2024-05-20; baseline finish none → 2024-05-20 |
| 43 | Módulo de publicidad integrado y funcional en el sistema de información del kiosco | 2024-05-20 A | 2024-05-20 A |  | 0% → 100% | 0d → none | baseline start none → 2024-05-20; baseline finish none → 2024-05-20 |
| 44 | Desarrollo del Sistema de Información terminado | 2024-05-20 A | 2024-05-20 A |  | 0% → 100% | 0d → none | baseline start none → 2024-05-20; baseline finish none → 2024-05-20 |
| 45 | **Prueba del sistema** | 2024-05-21 A | 2024-05-31 A |  | 0% → 100% | 0d → none | baseline start none → 2024-05-21; baseline finish none → 2024-05-31 |
| 46 | Definir los tipos de pruebas a realizar y los criterios de aceptación | 2024-05-21 A | 2024-05-21 A |  | 0% → 100% | 0d → none | baseline start none → 2024-05-21; baseline finish none → 2024-05-21 |
| 47 | Redactar casos de prueba detallados de cada módulo y funcionalidad del sistema | 2024-05-22 A | 2024-05-24 A |  | 0% → 100% | 0d → none | baseline start none → 2024-05-22; baseline finish none → 2024-05-24 |
| 48 | Ejecutar los casos de prueba utilizando herramientas de prueba adecuadas | 2024-05-27 A | 2024-05-27 A |  | 0% → 100% | 0d → none | baseline start none → 2024-05-27; baseline finish none → 2024-05-27 |
| 49 | Controlar y corregir los errores | 2024-05-28 A | 2024-05-29 A |  | 0% → 100% | 0d → none | baseline start none → 2024-05-28; baseline finish none → 2024-05-29 |
| 50 | Documentar los resultados de las pruebas | 2024-05-30 A | 2024-05-31 A |  | 0% → 100% | 0d → none | baseline start none → 2024-05-30; baseline finish none → 2024-05-31 |
| 51 | Pruebas del sistema completadas y errores corregidos | 2024-05-31 A | 2024-05-31 A |  | 0% → 100% | 0d → none | baseline start none → 2024-05-31; baseline finish none → 2024-05-31 |
| 52 | **Realización de la capacitación** | 2024-06-03 A | 2024-06-10 A | 5.25d → 6d | 0% → 100% | 0d → none | baseline start none → 2024-06-03; baseline finish none → 2024-06-10 |
| 53 | Definir los objetivos de la capacitación | 2024-06-03 A | 2024-06-03 A |  | 0% → 100% | 0d → none | baseline start none → 2024-06-03; baseline finish none → 2024-06-03 |
| 54 | Seleccionar y elaborar el material de capacitación | 2024-06-03 A | 2024-06-04 A |  | 0% → 100% | 0d → none | baseline start none → 2024-06-03; baseline finish none → 2024-06-04 |
| 55 | Definir el cronograma de la capacitación | 2024-06-04 → 2024-06-05 A (+1d) | 2024-06-04 → 2024-06-05 A (+1d) |  | 0% → 100% | 0d → none | constraint none → start no earlier than 2024-06-05; baseline start none → 2024-06-04; baseline finish none → 2024-06-04 |
| 56 | Capacitar en el uso de cada módulo del sistema (inventario, ventas, publicidad) | 2024-06-04 → 2024-06-05 A (+1d) | 2024-06-06 → 2024-06-07 A (+1d) |  | 0% → 100% | 0d → none | baseline start none → 2024-06-04; baseline finish none → 2024-06-06 |
| 57 | Practicar el uso del sistema en situaciones reales | 2024-06-06 → 2024-06-07 A (+1d) | 2024-06-10 A |  | 0% → 100% | 0d → none | baseline start none → 2024-06-06; baseline finish none → 2024-06-10 |
| 58 | Capacitación del personal en el uso del sistema de información completada | 2024-06-10 A | 2024-06-10 A |  | 0% → 100% | 0d → none | baseline start none → 2024-06-10; baseline finish none → 2024-06-10 |
| 59 | **Implementación del sistema** | 2024-06-03 A | 2024-06-04 A | 1.25d → 1.5d | 0% → 100% | 4d → none | baseline start none → 2024-06-03; baseline finish none → 2024-06-04 |
| 60 | Coordinar horario con la dueña del kiosko | 2024-06-03 A | 2024-06-03 A |  | 0% → 100% | 4d → none | baseline start none → 2024-06-03; baseline finish none → 2024-06-03 |
| 61 | Realizar la instalación del software | 2024-06-03 → 2024-06-04 A (+1d) | 2024-06-03 → 2024-06-04 A (+1d) |  | 0% → 100% | 4d → none | baseline start none → 2024-06-03; baseline finish none → 2024-06-03 |
| 62 | Controlar parametros | 2024-06-03 A | 2024-06-04 A |  | 0% → 100% | 4d → none | baseline start none → 2024-06-03; baseline finish none → 2024-06-04 |
| 63 | Implementación satisfactoria del sistema | 2024-06-04 A | 2024-06-04 A |  | 0% → 100% | 4d → none | baseline start none → 2024-06-04; baseline finish none → 2024-06-04 |
| 64 | Proyecto finalizado | 2024-06-10 A | 2024-06-10 A |  | 0% → 100% | 0d → none | baseline start none → 2024-06-10; baseline finish none → 2024-06-10 |
